# Cronograma P4 - Final Corrigido

How a schedule from MS Project changed from version to version. A marks actual dates.

## Version 1 (saved 2015-03-17, file P4_Cronograma_1.0.mpp)

Note of the change: atualizando06-Pastas

| ID | WBS | Task | Duration | Start | Finish | Predecessors | Total float |
| --- | --- | --- | --- | --- | --- | --- | --- |
| 1 | 1 | **Projeto 4 - Currículo Lattes** | 77d | 2014-12-02 | 2015-03-18 |  | 0d |
| 2 | 1.1 | **Planejamento** | 32d | 2014-12-02 | 2015-01-14 |  |  |
| 3 | 1.1.1 | **Gerar Documento de Requisitos** | 6d | 2014-12-02 | 2014-12-09 |  |  |
| 4 |  | Definição do documento de requisitos | 1d | 2014-12-02 | 2014-12-02 |  |  |
| 5 |  | Revisão do documento de requisitos | 3d | 2014-12-03 | 2014-12-05 | 4 |  |
| 6 |  | Correção do documento de requisitos | 2d | 2014-12-08 | 2014-12-09 | 5 |  |
| 7 | 1.1.2 | **Definir Métricas Estimativas e Recursos** | 9d | 2014-12-06 | 2014-12-18 |  | 0d |
| 8 |  | Listar recursos disponíveis | 3d | 2014-12-06 | 2014-12-09 |  |  |
| 9 |  | Revisar recursos disponíveis | 2d | 2014-12-10 | 2014-12-11 | 8 |  |
| 10 |  | Definir métricas e estimativas | 5d | 2014-12-12 | 2014-12-18 |  |  |
| 11 | 1.1.3 | **Gerar cronograma** | 3d | 2015-01-10 | 2015-01-14 |  | 0d |
| 12 |  | Gerar cronograma | 2d | 2015-01-10 | 2015-01-12 |  |  |
| 13 |  | Revisar e corrigir cronograma | 2d | 2015-01-13 | 2015-01-14 | 12 |  |
| 14 |  | Fim do Planejamento | 0d | 2014-12-02 | 2014-12-02 |  |  |
| 15 | 1.3 | **Módulo 1** | 24d | 2015-01-14 | 2015-02-16 |  |  |
| 16 | 1.3.1 | **Casos de uso (alto nível e expandido)** | 4d | 2015-01-14 | 2015-01-19 |  | 0d |
| 17 |  | Gerar | 2d | 2015-01-14 | 2015-01-15 |  |  |
| 18 |  | Revisar | 2d | 2015-01-16 | 2015-01-17 | 17 |  |
| 19 |  | Corrigir | 1d | 2015-01-19 | 2015-01-19 | 18 |  |
| 20 | 1.3.2 | **Diagrama de caso de uso** | 3d | 2015-01-16 | 2015-01-20 | 16 | 0d |
| 21 |  | Gerar | 2d | 2015-01-16 | 2015-01-17 |  |  |
| 22 |  | Revisar | 2d | 2015-01-18 | 2015-01-19 | 21 |  |
| 23 |  | Corrigir | 1d | 2015-01-20 | 2015-01-20 | 22 |  |
| 24 | 1.3.3 | **Modelo Conceitual** | 3d | 2015-01-21 | 2015-01-24 | 20 | 0d |
| 25 |  | Gerar | 1d | 2015-01-21 | 2015-01-21 |  |  |
| 26 |  | Revisar | 2d | 2015-01-22 | 2015-01-23 | 25 |  |
| 27 |  | Corrigir | 1d | 2015-01-24 | 2015-01-24 | 26 |  |
| 28 | 1.3.4 | **Diagrama de sequência** | 3d | 2015-01-28 | 2015-01-31 | 24 | 0d |
| 29 |  | Gerar | 2d | 2015-01-28 | 2015-01-29 |  |  |
| 30 |  | Revisar | 2d | 2015-01-29 | 2015-01-30 | 29 |  |
| 31 |  | Corrigir | 1d | 2015-01-31 | 2015-01-31 | 30 |  |
| 32 | 1.3.5 | **Diagrama de colaboração** | 4d | 2015-02-03 | 2015-02-06 | 29 | 0d |
| 33 |  | Gerar | 2d | 2015-02-03 | 2015-02-04 |  |  |
| 34 |  | Revisar | 1d | 2015-02-05 | 2015-02-05 | 33 |  |
| 35 |  | Corrigir | 1d | 2015-02-06 | 2015-02-06 | 34 |  |
| 36 | 1.3.6 | **Diagrama de classes** | 3d | 2015-02-05 | 2015-02-09 | 32 | 0d |
| 37 |  | Gerar | 1d | 2015-02-05 | 2015-02-05 |  |  |
| 38 |  | Revisar | 1d | 2015-02-06 | 2015-02-06 | 37 |  |
| 39 |  | Corrigir | 1d | 2015-02-09 | 2015-02-09 | 38 |  |
| 40 | 1.3.7 | **Codificação** | 6d | 2015-02-08 | 2015-02-16 | 36 | 0d |
| 41 |  | Codificação do projeto | 4d | 2015-02-08 | 2015-02-11 |  |  |
| 42 |  | Testes | 2d | 2015-02-12 | 2015-02-13 | 41 |  |
| 43 |  | Correção da codificação | 1d | 2015-02-16 | 2015-02-16 | 42 |  |
| 44 |  | Fim do Módulo 1 | 0d | 2014-12-02 | 2014-12-02 |  |  |
| 45 | 1.5 | **Módulo 2** | 12d | 2015-03-02 | 2015-03-17 |  |  |
| 46 | 1.5.1 | **Casos de uso (alto nível e expandido)** | 3d | 2015-03-02 | 2015-03-04 |  |  |
| 47 |  | Gerar | 1d | 2015-03-02 | 2015-03-02 |  |  |
| 48 |  | Revisar | 1d | 2015-03-03 | 2015-03-03 | 47 |  |
| 49 |  | Corrigir | 1d | 2015-03-04 | 2015-03-04 | 48 |  |
| 50 | 1.5.2 | **Diagrama de caso de uso** | 4d | 2015-03-03 | 2015-03-06 | 46 |  |
| 51 |  | Gerar | 1d | 2015-03-03 | 2015-03-03 |  |  |
| 52 |  | Revisar | 1d | 2015-03-04 | 2015-03-04 | 51 |  |
| 53 |  | Corrigir | 1d | 2015-03-05 | 2015-03-05 | 52 |  |
| 54 | 1.5.3 | **Modelo Conceitual** | 3d | 2015-03-06 | 2015-03-10 | 50 |  |
| 55 |  | Gerar | 1d | 2015-03-06 | 2015-03-06 |  |  |
| 56 |  | Revisar | 1d | 2015-03-07 | 2015-03-07 | 55 |  |
| 57 |  | Corrigir | 1d | 2015-03-08 | 2015-03-08 | 56 |  |
| 58 | 1.5.4 | **Diagrama de sequência** | 3d | 2015-03-09 | 2015-03-11 | 54 |  |
| 59 |  | Gerar | 1d | 2015-03-09 | 2015-03-09 |  |  |
| 60 |  | Revisar | 1d | 2015-03-10 | 2015-03-10 | 59 |  |
| 61 |  | Corrigir | 1d | 2015-03-11 | 2015-03-11 | 60 |  |
| 62 | 1.5.5 | **Diagrama de colaboração** | 3d | 2015-03-10 | 2015-03-12 | 58 | 0d |
| 63 |  | Gerar | 2d | 2015-03-10 | 2015-03-11 |  |  |
| 64 |  | Revisar | 1d | 2015-03-11 | 2015-03-11 | 63 |  |
| 65 |  | Corrigir | 1d | 2015-03-12 | 2015-03-12 | 64 |  |
| 66 | 1.5.6 | **Diagrama de classes** | 3d | 2015-03-11 | 2015-03-13 | 62 | 0d |
| 67 |  | Gerar | 1d | 2015-03-11 | 2015-03-11 |  |  |
| 68 |  | Revisar | 1d | 2015-03-12 | 2015-03-12 | 67 |  |
| 69 |  | Corrigir | 1d | 2015-03-13 | 2015-03-13 | 68 |  |
| 70 | 1.5.7 | **Codificação** | 2d | 2015-03-14 | 2015-03-17 | 66 | 0d |

| ID | WBS | Task | Duration | Start | Finish | Predecessors |
| --- | --- | --- | --- | --- | --- | --- |
| 71 |  | Codificação do projeto | 2d | 2015-03-14 | 2015-03-16 |  |
| 72 |  | Testes | 1d | 2015-03-16 | 2015-03-16 | 71 |
| 73 |  | Correção da codificação | 1d | 2015-03-17 | 2015-03-17 | 72 |
| 74 | 1.5.8 | **Análise Teste de Qualidade** | 1d | 2015-03-18 | 2015-03-18 | 70 |
| 75 |  | Análise e Teste de Conformidade com Requisitos | 1d | 2015-03-18 | 2015-03-18 |  |
| 76 |  | Fim do Projeto | 0d | 2014-12-02 | 2014-12-02 |  |

## Version 2 (saved 2015-03-24, file P4_Cronograma_2.0.mpp)

Note of the change: atualizando06-Pastas

Last finish 2015-03-18 → 2015-03-17 (-1d). Complete tasks 0 → 53.

Added:

| ID | Task | Duration | Start | Finish |
| --- | --- | --- | --- | --- |
| 24 | RTF com Grupo 01 | 1d | 2015-01-22 A | 2015-01-22 A |
| 33 | RTF com Grupo 01 | 1d | 2015-01-29 A | 2015-01-29 A |
| 38 | RTF com Grupo 01 | 1d | 2015-02-05 A | 2015-02-05 A |

Removed: 74 Análise Teste de Qualidade; 75 Análise e Teste de Conformidade com Requisitos

Changed:

| ID | Task | Start | Finish | Duration | Complete | Total float | Predecessors | Other |
| --- | --- | --- | --- | --- | --- | --- | --- | --- |
| 1 | **Projeto 4 - Currículo Lattes** | 2014-12-02 A | 2015-03-18 → 2015-03-17 (-1d) | 77d → 76d | 0% → 99% |  |  |  |
| 2 | **Planejamento** | 2014-12-02 A | 2015-01-14 A |  | 0% → 100% |  |  | resources none → Gerentes - Roberto e Renan |
| 3 | **Gerar Documento de Requisitos** | 2014-12-02 A | 2014-12-09 A |  | 0% → 100% |  |  | resources none → Gerentes - Roberto e Renan |
| 4 | Definição do documento de requisitos | 2014-12-02 A | 2014-12-02 A |  | 0% → 100% |  |  | resources Gerente → Gerentes - Roberto e Renan |
| 5 | V&V 1 - Doc. Requisitos | 2014-12-03 A | 2014-12-05 A |  | 0% → 100% |  |  | was named Revisão do documento de requisitos; resources Gerente → Gerentes - Roberto e Renan |
| 6 | Correção do documento de requisitos | 2014-12-08 A | 2014-12-09 A |  | 0% → 100% |  | 5 → 5, 4 | resources Gerente → Gerentes - Roberto e Renan |
| 7 | **Definir Métricas Estimativas e Recursos** | 2014-12-06 A | 2014-12-18 A |  | 0% → 100% | 0d → none |  | resources none → Gerentes - Roberto e Renan |
| 8 | Listar recursos disponíveis | 2014-12-06 A | 2014-12-09 A |  | 0% → 100% |  |  | resources Gerente → Gerente - Roberto e Renan |
| 9 | Revisar recursos disponíveis | 2014-12-10 A | 2014-12-11 A |  | 0% → 100% |  |  | resources Gerente → Gerentes - Roberto e Renan |
| 10 | Definir métricas e estimativas | 2014-12-12 A | 2014-12-18 A | 5d → 0d | 0% → 100% |  |  | resources Gerente → Gerentes - Roberto e Renan |
| 11 | **Gerar Cronograma** | 2015-01-10 A | 2015-01-14 A |  | 0% → 100% | 0d → none |  | was named Gerar cronograma; resources none → Gerentes - Roberto e Renan |
| 12 | Gerar cronograma | 2015-01-10 A | 2015-01-12 A |  | 0% → 100% |  |  | resources Gerente → Gerentes - Roberto e Renan |
| 13 | Revisar e corrigir cronograma | 2015-01-13 A | 2015-01-14 A |  | 0% → 100% |  |  | resources Gerente → Gerentes - Roberto e Renan |
| 15 | **Módulo 1** | 2015-01-14 A | 2015-02-16 A |  | 0% → 100% |  |  |  |
| 16 | **Casos de uso (alto nível e expandido)** | 2015-01-14 A | 2015-01-19 A |  | 0% → 100% | 0d → none |  |  |
| 17 | Gerar | 2015-01-14 A | 2015-01-15 A |  | 0% → 100% |  |  | resources Analista e Projetista → Analista e Projetista - Haroldo e Thiago |
| 18 | V&V 1 | 2015-01-16 A | 2015-01-17 A |  | 0% → 100% |  |  | was named Revisar; resources SQA → SQA - Rogerio |
| 19 | Corrigir | 2015-01-19 A | 2015-01-19 A |  | 0% → 100% |  | 18 → 18, 17 | resources Analista e Projetista → Analista e Projetista - Haroldo e Thiago |
| 20 | **Diagrama de caso de uso** | 2015-01-16 → 2015-01-18 A (+2d) | 2015-01-20 → 2015-01-22 A (+2d) | 3d → 4d | 0% → 100% | 0d → none |  |  |
| 21 | Gerar | 2015-01-16 → 2015-01-20 A (+4d) | 2015-01-17 → 2015-01-21 A (+4d) |  | 0% → 100% |  | none → 16 | resources Analista e Projetista → Analista e Projetista - Haroldo e Thiago |
| 22 | V&V 1 | 2015-01-18 A | 2015-01-19 A |  | 0% → 100% |  |  | was named Revisar; resources SQA → SQA - Rogerio |
| 23 | Corrigir | 2015-01-20 → 2015-01-22 A (+2d) | 2015-01-20 → 2015-01-22 A (+2d) |  | 0% → 100% |  | 22 → 22, 21 | resources Analista e Projetista → Analista e Projetista - Haroldo e Thiago |
| 25 | **Modelo Conceitual** | 2015-01-21 A | 2015-01-24 A |  | 0% → 100% | 0d → none |  |  |
| 26 | Gerar | 2015-01-21 A | 2015-01-21 A |  | 0% → 100% |  |  | resources Analista e Projetista → Analista e Projetista - Haroldo e Thiago |
| 27 | V&V 1 | 2015-01-22 A | 2015-01-23 A |  | 0% → 100% |  |  | was named Revisar; resources SQA → SQA - Rogerio |
| 28 | Corrigir | 2015-01-24 A | 2015-01-24 A |  | 0% → 100% |  |  | resources Analista e Projetista → Analista e Projetista - Haroldo e Thiago |
| 29 | **Diagrama de sequência** | 2015-01-28 → 2015-01-20 A (-8d) | 2015-01-31 → 2015-02-02 A (+2d) | 3d → 10d | 0% → 100% | 0d → none |  |  |
| 30 | Gerar | 2015-01-28 → 2015-01-20 A (-8d) | 2015-01-29 → 2015-01-21 A (-8d) |  | 0% → 100% |  | none → 16 | resources Analista e Projetista → Analista e Projetista - Haroldo e Thiago |
| 31 | V&V 1 | 2015-01-29 A | 2015-01-30 A |  | 0% → 100% |  |  | was named Revisar; resources SQA → SQA - Rogerio |
| 32 | Corrigir | 2015-01-31 → 2015-02-02 A (+2d) | 2015-01-31 → 2015-02-02 A (+2d) |  | 0% → 100% |  | 31 → 31, 30 | resources Analista e Projetista → Analista e Projetista - Haroldo e Thiago |
| 34 | **Diagrama de colaboração** | 2015-02-03 A | 2015-02-06 A |  | 0% → 100% | 0d → none |  |  |
| 35 | Gerar | 2015-02-03 A | 2015-02-04 A |  | 0% → 100% |  | none → 29 | resources Analista e Projetista → Analista e Projetista - Haroldo e Thiago |
| 36 | V&V 1 | 2015-02-05 A | 2015-02-05 A |  | 0% → 100% |  |  | was named Revisar; resources SQA → SQA - Rogerio |
| 37 | Corrigir | 2015-02-06 A | 2015-02-06 A |  | 0% → 100% |  | 36 → 36, 35 | resources Analista e Projetista → Analista e Projetista - Haroldo e Thiago |
| 39 | **Diagrama de classes** | 2015-02-05 A | 2015-02-09 A |  | 0% → 100% | 0d → none |  |  |
| 40 | Gerar | 2015-02-05 A | 2015-02-05 A |  | 0% → 100% |  |  | resources Analista e Projetista → Analista e Projetista - Haroldo e Thiago |
| 41 | V&V 1 | 2015-02-06 A | 2015-02-06 A |  | 0% → 100% |  |  | was named Revisar; resources SQA → SQA - Rogerio |
| 42 | Corrigir | 2015-02-09 A | 2015-02-09 A |  | 0% → 100% |  |  | resources Analista e Projetista → Analista e Projetista - Haroldo e Thiago |
| 43 | **Codificação** | 2015-02-08 A | 2015-02-16 A |  | 0% → 100% | 0d → none |  |  |
| 44 | Codificação do projeto | 2015-02-08 A | 2015-02-11 A |  | 0% → 100% |  |  | resources Codificador → Codificadores - Valdir e Gabriel |
| 45 | Testes | 2015-02-12 A | 2015-02-13 A |  | 0% → 100% |  |  | resources SQA → SQA - Rogerio |
| 46 | Correção da codificação | 2015-02-16 A | 2015-02-16 A |  | 0% → 100% |  |  | resources Codificador → Codificadores - Valdir e Gabriel |
| 48 | **Módulo 2** | 2015-03-02 A | 2015-03-17 A |  | 0% → 100% |  |  |  |
| 49 | **Casos de uso (alto nível e expandido)** | 2015-03-02 A | 2015-03-04 A |  | 0% → 100% |  |  |  |
| 50 | Gerar | 2015-03-02 A | 2015-03-02 A |  | 0% → 100% |  |  | resources Analista e Projetista → Analista e Projetista - Haroldo e Thiago |
| 51 | V&V 2 | 2015-03-03 A | 2015-03-03 A |  | 0% → 100% |  |  | was named Revisar; resources SQA → SQA - Rogerio |
| 52 | Corrigir | 2015-03-04 A | 2015-03-04 A |  | 0% → 100% |  |  | resources Analista e Projetista → Analista e Projetista - Haroldo e Thiago |
| 53 | **Diagrama de caso de uso** | 2015-03-03 A |  |  | 0% → 100% |  |  |  |
| 54 | Gerar | 2015-03-03 A | 2015-03-03 A |  | 0% → 100% |  |  | resources Analista e Projetista → Analista e Projetista - Haroldo e Thiago |
| 55 | V&V 2 | 2015-03-04 A | 2015-03-04 A |  | 0% → 100% |  |  | was named Revisar; resources SQA → SQA - Rogerio |
| 56 | Corrigir | 2015-03-05 A | 2015-03-05 A |  | 0% → 100% |  |  | resources Analista e Projetista → Analista e Projetista - Haroldo e Thiago |
| 57 | **Modelo Conceitual** | 2015-03-06 A |  |  | 0% → 100% |  |  |  |
| 58 | Gerar | 2015-03-06 A | 2015-03-06 A |  | 0% → 100% |  |  | resources Analista e Projetista → Analista e Projetista - Haroldo e Thiago |
| 59 | V&V 2 | 2015-03-07 A | 2015-03-07 A |  | 0% → 100% |  |  | was named Revisar; resources SQA → SQA - Rogerio |
| 60 | Corrigir | 2015-03-08 A | 2015-03-08 A |  | 0% → 100% |  |  | resources Analista e Projetista → Analista e Projetista - Haroldo e Thiago |
| 61 | **Diagrama de sequência** | 2015-03-09 A | 2015-03-11 A |  | 0% → 100% |  |  |  |
| 62 | Gerar | 2015-03-09 A | 2015-03-09 A |  | 0% → 100% |  |  | resources Analista e Projetista → Analista e Projetista - Haroldo e Thiago |
| 63 | V&V 2 | 2015-03-10 A | 2015-03-10 A |  | 0% → 100% |  |  | was named Revisar; resources SQA → SQA - Rogerio |
| 64 | Corrigir | 2015-03-11 A | 2015-03-11 A |  | 0% → 100% |  |  | resources Analista e Projetista → Analista e Projetista - Haroldo e Thiago |
| 65 | **Diagrama de colaboração** | 2015-03-10 A | 2015-03-12 A |  | 0% → 100% | 0d → none |  |  |
| 66 | Gerar | 2015-03-10 A | 2015-03-11 A |  | 0% → 100% |  |  | resources Analista e Projetista → Analista e Projetista - Haroldo e Thiago |
| 67 | V&V 2 | 2015-03-11 A | 2015-03-11 A |  | 0% → 100% |  |  | was named Revisar; resources SQA → SQA - Rogerio |
| 68 | Corrigir | 2015-03-12 A | 2015-03-12 A |  | 0% → 100% |  |  | resources Analista e Projetista → Analista e Projetista - Haroldo e Thiago |
| 69 | **Diagrama de classes** | 2015-03-11 A | 2015-03-13 A |  | 0% → 100% | 0d → none |  |  |
| 70 | Gerar | 2015-03-11 A | 2015-03-11 A |  | 0% → 100% |  |  | resources Analista e Projetista → Analista e Projetista - Haroldo e Thiago |
| 71 | V&V 2 | 2015-03-12 A | 2015-03-12 A |  | 0% → 100% |  |  | was named Revisar; resources SQA → SQA - Rogerio |
| 72 | Corrigir | 2015-03-13 A | 2015-03-13 A |  | 0% → 100% |  |  | resources Analista e Projetista → Analista e Projetista - Haroldo e Thiago |
| 73 | **Codificação** | 2015-03-14 A | 2015-03-17 A |  | 0% → 100% | 0d → none |  |  |
| 74 | Codificação do projeto | 2015-03-14 A | 2015-03-16 A |  | 0% → 100% |  |  | resources Codificador → Codificadores - Valdir e Gabriel |
| 75 | Testes | 2015-03-16 A | 2015-03-16 A |  | 0% → 100% |  |  | resources SQA → SQA - Rogerio |

| ID | Task | Start | Finish | Complete | Other |
| --- | --- | --- | --- | --- | --- |
| 76 | Correção da codificação | 2015-03-17 A | 2015-03-17 A | 0% → 100% | resources Codificador → Codificadores - Valdir e Gabriel |

## Version 3 (saved 2015-03-25, file P4_Cronograma_2.0.mpp)

Note of the change: atualizando-Rede-De-Tarefas

Last finish stays 2015-03-17. Complete tasks 53 → 52.

Changed:

| ID | Task | Finish | Duration | Complete | Total float |
| --- | --- | --- | --- | --- | --- |
| 1 | **Projeto 4 - Currículo Lattes** |  |  | 99% → 94% |  |
| 2 | **Planejamento** | 2015-01-14 A → 2015-01-14 |  | 100% → 75% |  |
| 7 | **Definir Métricas Estimativas e Recursos** | 2014-12-18 A → 2014-12-25 (+7d) | 9d → 14d | 100% → 50% | none → 0d |
| 10 | Definir métricas e estimativas | 2014-12-18 A → 2014-12-25 (+7d) | 0d → 5d | 100% → 0% |  |
